# LM3 manufacturing-method planning schedule

Schedule from an IFC model.
OpenSourceRail LM3 manufacturing reference
Pilot local-manufacture route for one LM3 three-car trainset; elapsed allowances support factory planning but never override a released material datasheet, supplier manual, WPS, adhesive open/cure time, or competent engineering decision.

## Schedule

| ID | Activity | Duration | Predecessors |
| --- | --- | --- | --- |
| LM3-MFG-010 | **Locally fabricated steel body, bogie and interface structures** | 72h |  |
| LM3-MFG-010-10 | Release material and fixture | 2h |  |
| LM3-MFG-010-20 | Cut, form, machine and deburr | 16h | LM3-MFG-010-10 |
| LM3-MFG-010-30 | Fixture, tack and survey | 8h | LM3-MFG-010-20 |
| LM3-MFG-010-40 | Qualified weld and controlled cool | 28h | LM3-MFG-010-30 |
| LM3-MFG-010-50 | NDT, machine datums and coat | 18h | LM3-MFG-010-40 |
| LM3-MFG-020 | **Reusable one-metre GFRP body/roof moulds and split end-cowl moulds** | 24h |  |
| LM3-MFG-020-10 | Inspect, clean and release mould | 1h |  |
| LM3-MFG-020-20 | Apply exterior finish primer or gelcoat | 1h 15min | LM3-MFG-020-10 |
| LM3-MFG-020-30 | Load reinforcement, core, solid lands and inserts | 3h | LM3-MFG-020-20 |
| LM3-MFG-020-40 | Bag, leak-test and infuse | 2h | LM3-MFG-020-30 |
| LM3-MFG-020-50 | Cure in mould | 12h | LM3-MFG-020-40 |
| LM3-MFG-020-60 | Demould, trim, seal and dry-fit | 4h 45min | LM3-MFG-020-50 |
| LM3-MFG-030 | **Solar-reflective, high-emittance exterior coating and thermal witness route** | 16h |  |
| LM3-MFG-030-10 | Condition and inspect substrate | 1h |  |
| LM3-MFG-030-20 | Prepare and prime | 2h | LM3-MFG-030-10 |
| LM3-MFG-030-30 | Apply reflective/emissive topcoat | 2h | LM3-MFG-030-20 |
| LM3-MFG-030-40 | Controlled cure | 10h | LM3-MFG-030-30 |
| LM3-MFG-030-50 | Inspect and retain coupons | 1h | LM3-MFG-030-40 |
| LM3-MFG-040 | **Replaceable side-window cassette, pressure frame, seal and drain installation** | 3h |  |
| LM3-MFG-040-10 | Receive and inspect cassette | 25min |  |
| LM3-MFG-040-20 | Gauge aperture and dry-fit | 35min | LM3-MFG-040-10 |
| LM3-MFG-040-30 | Install dry seal and pressure frame | 55min | LM3-MFG-040-20 |
| LM3-MFG-040-40 | Verify compression, drains and services | 25min | LM3-MFG-040-30 |
| LM3-MFG-040-50 | Water and replacement test | 40min | LM3-MFG-040-40 |

Notes:
- LM3-MFG-010: Controlled cut/flat-pattern pack, WPS/WPQR, qualified welders, weld map, NDT plan, dimensional survey and released structural proof.
- LM3-MFG-010-10: Verify drawing revision, heat certificates, section/plate identity, fixture calibration and datum targets before cutting. Quarantine substitutions.
- LM3-MFG-010-20: Produce the controlled cut list and flat patterns; protect datum and bond lands; identify every primary part to heat and drawing position.
- LM3-MFG-010-30: Load parts against the 3-2-1 datum scheme, install calibrated shims/stops, tack to the released sequence and survey before production welding.
- LM3-MFG-010-40: Execute only the released weld map/WPS with heat-input and consumable records; use a balanced sequence and controlled cooling or stress relief where specified.
- LM3-MFG-010-50: Complete VT and classed MT/UT, repair through an NCR, machine released interfaces, survey the frame, restore edge/cavity protection and record coating batches.
- LM3-MFG-020: Released laminate/core/insert map, fire evidence, material shelf life, mould survey, vacuum leak check, cure record, witness coupon, trim report, insert pull-out sample and master-frame dry fit.
- LM3-MFG-020-10: Inspect mould A-surface, split line, vacuum ports and datums; clean with the qualified system and apply the released semi-permanent release process. Record mould and release lots.
- LM3-MFG-020-20: Apply the released UV/fire-compatible finish layer at controlled wet-film thickness. The supplier minimum/maximum overcoat window overrides this planning allowance.
- LM3-MFG-020-30: Place identified dry plies, local core and solid laminate lands to the released ply book; pot or fixture inserts and build a co-cured witness coupon.
- LM3-MFG-020-40: Install peel ply/flow media/bag and resin lines, record a stable vacuum leak test, then infuse within supplier temperature, viscosity and working-time limits.
- LM3-MFG-020-50: Hold the supplier-qualified time/temperature cure and record thermocouples. Do not demould on elapsed time alone; cure acceptance or hardness/Tg evidence controls release.
- LM3-MFG-020-60: Demould without prying on show surfaces; inspect/tap-check, CNC trim and drill in the datum fixture, seal every cut edge, install inserts/seals, gauge the part and dry-fit it to the master frame.
- LM3-MFG-030: Rail fire/smoke compatibility, substrate/primer compatibility, adhesion, weathering, cleanability, colour/glare review and measured new/aged solar reflectance and thermal emittance. No cooling or energy saving may be claimed before vehicle thermal testing.
- LM3-MFG-030-10: Verify cured laminate, sealed edges, moisture/temperature limits and defect repair; mask bonds, seals, datums, windows, sensors and electrical earths.
- LM3-MFG-030-20: Abrade and clean only by the released coating procedure, apply compatible primer and coat a traceable witness coupon beside the vehicle modules.
- LM3-MFG-030-30: Apply the selected light-colour rail topcoat to controlled wet/dry film thickness. Avoid unqualified experimental radiative-cooling chemistry and review glare/visibility with the authority.
- LM3-MFG-030-40: Maintain supplier temperature, humidity and ventilation limits; the released coating datasheet controls flash, recoat, cure and return-to-service times.
- LM3-MFG-030-50: Record film thickness, adhesion/cure acceptance, colour/gloss and measured solar reflectance/emittance; retain labelled coupons for accelerated weathering and cleaning trials.
- LM3-MFG-040: Supplier glazing/edge certificate, retained frame calculation, approved surface preparation, seal compression map, drain test, water-ingress test, heater/isolation test where fitted and timed replacement demonstration.
- LM3-MFG-040-10: Confirm pane/cassette identity and orientation; inspect laminate, edges, frame bond and heater terminals. Quarantine any edge impact, delamination or expired adhesive evidence.
- LM3-MFG-040-20: Gauge carrier-ring datums and drains, protect glass edges, place the cassette on nonmetallic setting blocks and confirm uniform design clearance without forcing the glass.
- LM3-MFG-040-30: Fit the one-piece keyed seal without stretch, lubricants or unapproved sealant; install the pressure frame and tighten captive fasteners in the released cross-pattern to the joint schedule.
- LM3-MFG-040-40: Measure seal compression at the released witness points; confirm drain continuity, secondary retention, electrical isolation and heater continuity where fitted.
- LM3-MFG-040-50: Run the controlled spray test, inspect the dry side and drains, then remove/refit the first article with the documented lifting/jacking method and record elapsed replacement time.

| ID | Activity | Duration | Predecessors |
| --- | --- | --- | --- |
| LM3-MFG-050 | **Supplier door cassette on locally made four-point adjustable carrier** | 5h |  |
| LM3-MFG-050-10 | Accept supplier cassette and portal | 45min |  |
| LM3-MFG-050-20 | Lift, pin and adjust carrier | 1h 15min | LM3-MFG-050-10 |
| LM3-MFG-050-30 | Join, seal and connect | 1h | LM3-MFG-050-20 |
| LM3-MFG-050-40 | Static functional and safety tests | 1h 15min | LM3-MFG-050-30 |
| LM3-MFG-050-50 | Ingress and replacement demonstration | 45min | LM3-MFG-050-40 |
| LM3-MFG-060 | **Removable floor panels, transport flooring and common passenger-fixture rail** | 16h |  |
| LM3-MFG-060-10 | Dry-build removable floor and service hatches | 3h |  |
| LM3-MFG-060-20 | Prepare floor and pre-cut covering | 2h 30min | LM3-MFG-060-10 |
| LM3-MFG-060-30 | Bond covering | 3h 30min | LM3-MFG-060-20 |
| LM3-MFG-060-40 | Install service rails and inserts | 3h | LM3-MFG-060-30 |
| LM3-MFG-060-50 | Mount and proof passenger fixtures | 3h | LM3-MFG-060-40 |
| LM3-MFG-060-60 | Finish, cure and inspect | 1h | LM3-MFG-060-50 |
| LM3-MFG-070 | **Supplier traction motor/gearbox integration into locally fabricated powered bogie** | 12h |  |
| LM3-MFG-070-10 | Accept frame and supplier kits | 1h 30min |  |
| LM3-MFG-070-20 | Set wheelsets and running gear | 2h 30min | LM3-MFG-070-10 |
| LM3-MFG-070-30 | Install and align motor/gearbox | 3h | LM3-MFG-070-20 |
| LM3-MFG-070-40 | Route services and guards | 1h 30min | LM3-MFG-070-30 |
| LM3-MFG-070-50 | Static rotation, brake and electrical tests | 2h 30min | LM3-MFG-070-40 |
| LM3-MFG-070-60 | Release and preserve | 1h | LM3-MFG-070-50 |
| LM3-MFG-080 | **Lighting, HVAC, HV/LV services and keyed replaceable modules** | 16h |  |
| LM3-MFG-080-10 | Preassemble and test modules off vehicle | 3h |  |
| LM3-MFG-080-20 | Install rails, trays, ducts and curb seals | 3h | LM3-MFG-080-10 |
| LM3-MFG-080-30 | Install keyed LV/data and segregated HV services | 4h | LM3-MFG-080-20 |
| LM3-MFG-080-40 | Install HVAC, batteries and power modules | 3h | LM3-MFG-080-30 |
| LM3-MFG-080-50 | Cold commissioning | 2h | LM3-MFG-080-40 |
| LM3-MFG-080-60 | Functional release | 1h | LM3-MFG-080-50 |

Notes:
- LM3-MFG-050: Supplier and interface freeze, carrier load proof, EN 14752/national evidence as applicable, datum and seal maps, closed-and-locked loop, obstacle detection, emergency release, water test and timed cassette replacement.
- LM3-MFG-050-10: Verify serial/revision/evidence, inspect seals/leaf/drive and gauge the locally made portal and four carrier datums before lifting the cassette.
- LM3-MFG-050-20: Use the approved lift points; engage datum pins, install four carrier shoes and adjust only within their released range to achieve leaf/aperture geometry without distorting the cassette.
- LM3-MFG-050-30: Install sealed fasteners to the controlled joint schedule, fit the keyed replaceable seal and connector, retain service loops and record final adjuster positions and witness marks.
- LM3-MFG-050-40: Test open/close cycles, obstruction detection, closed-and-locked circuit, traction interlock, emergency release, local isolation and degraded/manual operation under the supplier procedure.
- LM3-MFG-050-50: Run the controlled water test and first-article removal/refit; repeat safety tests after replacement and record time, tooling and adjustments.
- LM3-MFG-060: Fire/smoke certificates, substrate moisture/flatness, adhesive batch and open time, seam/edge detail, slip resistance, hatch removal, fixture load calculations and proof samples, PRM/egress gauge and snag/rattle inspection.
- LM3-MFG-060-10: Gauge floor supports, dry-fit numbered boards/hatches, verify flush joints, edge radii, lift points and uninterrupted access to battery/HV inspection zones.
- LM3-MFG-060-20: Verify substrate flatness, dryness and cleanliness; cut labelled floor pieces from controlled CAD templates and preserve access-hatch breaks, coved edges and drainage paths.
- LM3-MFG-060-30: Condition material, apply only the selected supplier adhesive at specified spread rate/open time, lay without trapped air, roll in both directions and complete released seam/edge treatment.
- LM3-MFG-060-40: Set blind threaded inserts perpendicular with the supplier force-controlled tool and sampled pull checks; gauge OSR-RAIL-42 pitch/alignment and preserve galvanic isolation.
- LM3-MFG-060-50: Install seats, handrails and equipment through released saddles/joints; record torque/locking, then proof-load first articles to the approved fixture calculation without using trim as a load path.
- LM3-MFG-060-60: Respect adhesive return-to-service time, inspect adhesion/seams/slip and PRM geometry, remove/refit every service hatch and complete snag, sharp-edge and rattle checks.
- LM3-MFG-070: Supplier motor/gearbox/wheelset/brake freeze, bogie-frame proof/NDT, mount-load proof, certified fastener/joint schedule, alignment and backlash, lubrication, insulation/bonding, rotation, brake and thermal instrumentation tests.
- LM3-MFG-070-10: Verify bogie frame NDT/datum survey and all serialized motor, gearbox, coupling, wheelset, bearing, brake and suspension evidence before unpacking.
- LM3-MFG-070-20: Load the controlled bogie stand, install axlebox/suspension/brake kits under supplier instructions and record orientation, clearances, lubrication and safety locking.
- LM3-MFG-070-30: Use the dedicated alignment fixture; lift from supplier points, set mount shims, coupling/gear mesh and torque link, then close released high-integrity joints with calibrated tools and independent witness.
- LM3-MFG-070-40: Install bonding, temperature/speed/WSP harnesses, junctions, guards and safety lanyards with released bend radii, movement envelope and service access.
- LM3-MFG-070-50: Check free rotation, alignment/backlash, oil level/leaks, brake application/release, insulation resistance, bonding and sensor polarity before powered testing.
- LM3-MFG-070-60: Record mass/ride-height setup, close inspection covers, apply witness marks and preservation, and quarantine the bogie until vehicle marriage.
- LM3-MFG-080: Supplier evidence, fire/EMC/vibration/IP checks, harness 100% continuity and insulation, keyed/polarity audit, HVIL, fluid pressure/drain tests, lighting lux/emergency-duration test, HVAC airflow and condensate test.
- LM3-MFG-080-10: Build lighting, harness, duct, tray and cabinet modules on dedicated boards/rails; record serials, connectors, firmware/configuration and incoming evidence.
- LM3-MFG-080-20: Gauge common datums, install isolated rails/trays and supplier-approved seals, protect fire barriers and preserve removable access zones.
- LM3-MFG-080-30: Route pre-terminated looms to released clips and bend radii; keep HV, LV/data and fluids segregated, fit service loops and blanking caps, and prevent field-cut lighting wires.
- LM3-MFG-080-40: Use approved lifts and supplier mounting kits; close coolant, drain, bond, service-disconnect and HVIL interfaces under LOTO.
- LM3-MFG-080-50: Complete continuity, insulation, bonding, connector keying, sensor enumeration, pressure/leak and drain-flow tests before energisation.
- LM3-MFG-080-60: Run lighting lux/emergency tests, HVAC airflow/condensate tests and controlled HVIL/pre-charge checks; attach actual records to the train configuration.

| ID | Activity | Duration | Predecessors |
| --- | --- | --- | --- |
| LM3-MFG-090 | **Three-car final assembly, static test and manufacturing release** | 48h |  |
| LM3-MFG-090-10 | Accept child assemblies and final road | 4h |  |
| LM3-MFG-090-20 | Bogie marriage and articulation | 10h | LM3-MFG-090-10 |
| LM3-MFG-090-30 | Close trainlines, couplers and remaining fit-out | 8h | LM3-MFG-090-20 |
| LM3-MFG-090-40 | Static systems commissioning | 12h | LM3-MFG-090-30 |
| LM3-MFG-090-50 | Geometry, mass and water tests | 6h | LM3-MFG-090-40 |
| LM3-MFG-090-60 | Independent review and controlled release | 8h | LM3-MFG-090-50 |

Notes:
- LM3-MFG-090: All child travelers accepted, train mass/geometry/clearance, brake/door/HV/communications/fire-detection tests, software/configuration hashes, static and low-speed test evidence, open NCR review and independent manufacturing release.
- LM3-MFG-090-10: Verify signed child travelers, serial/configuration records, lifting-column certification, track level and vehicle datum survey; unresolved safety NCRs block marriage.
- LM3-MFG-090-20: Lift only at released points, roll accepted bogies into surveyed positions, lower onto interfaces, close body/bogie and articulation joints, and independently witness safety-critical locking.
- LM3-MFG-090-30: Connect labelled HV/LV/data/coolant/air paths, install end equipment and remaining service panels, then perform continuity, leak, movement-envelope and access checks.
- LM3-MFG-090-40: Run brake, door/interlock, lighting, HVAC, battery/HVIL, detection, communications, passenger systems, emergency and degraded-mode procedures against released test scripts.
- LM3-MFG-090-50: Survey ride height/body/articulation/clearance, weigh the train, run roof/door/window ingress tests and reconcile the as-built mass and configuration records.
- LM3-MFG-090-60: Review all records and NCRs, freeze software/configuration hashes and issue only a manufacturing release to the authorised low-speed/static test programme—not passenger service approval.
